# 电解液充电能力评估（一 阶段）

Schedule from a web Gantt chart, 2025-12-09 to 2026-02-27.
Saturdays and Sundays are off

## Schedule

| ID | WBS | Task | Duration | Start | Finish | Predecessors | Complete | inPeople | Status |
| --- | --- | --- | --- | --- | --- | --- | --- | --- | --- |
| 2 | 1 | **平台工作（本征参数测量）** | 36d | 2025-12-09 | 2026-01-27 |  | 4% |  |  |
| 3 | 1.1 | **电解液配置（高通量）** | 36d | 2025-12-09 | 2026-01-27 |  | 4% | 邢玉泽 |  |
| 4 | 1.1.1 | 批次0（EL1~EL15） | 5d | 2025-12-09 | 2025-12-15 |  | 30% |  |  |
| 5 | 1.1.2 | 批次1 | 7d | 2025-12-16 | 2025-12-24 | 4 |  |  | waiting |
| 6 | 1.1.3 | 批次2 | 6d | 2025-12-25 | 2026-01-01 | 5 |  |  | waiting |
| 7 | 1.1.4 | 批次3 | 6d | 2026-01-02 | 2026-01-09 | 6 |  |  | waiting |
| 8 | 1.1.5 | 批次4 | 6d | 2026-01-12 | 2026-01-19 | 7 |  |  | waiting |
| 9 | 1.1.6 | 批次5 | 6d | 2026-01-20 | 2026-01-27 | 8 |  |  | waiting |
| 10 | 2 | **方法类工作（提升准确性&通量）** | 41d | 2025-12-09 | 2026-02-03 |  | 7% |  |  |
| 11 | 2.1 | 迁移数方法可靠性验证 | 10d | 2025-12-09 | 2025-12-22 |  | 40% | 李岩岩 |  |
| 12 | 2.2 | 扩散系数方法在羧酸酯体系优化 | 6d | 2025-12-16 | 2025-12-23 |  |  | 孙宗杰 | waiting |
| 13 | 2.3 | 扩散系数高通量数据处理 | 9d | 2025-12-19 | 2025-12-31 |  |  | 孙宗杰 | waiting |
| 14 | 2.4 | **迁移数、电极电势、扩散系数采集** | 31d | 2025-12-23 | 2026-02-03 |  |  | 李岩岩 | waiting |
| 15 | 2.4.1 | 批次0（EL1~EL15） | 5d | 2025-12-23 | 2025-12-29 | 11 |  |  | waiting |
| 16 | 2.4.2 | 批次1 | 6d | 2025-12-29 | 2026-01-05 |  |  |  | waiting |
| 17 | 2.4.3 | 批次2 | 6d | 2026-01-05 | 2026-01-12 |  |  |  | waiting |
| 18 | 2.4.4 | 批次3 | 6d | 2026-01-12 | 2026-01-19 |  |  |  | waiting |
| 19 | 2.4.5 | 批次4 | 6d | 2026-01-20 | 2026-01-27 |  |  |  | waiting |
| 20 | 2.4.6 | 批次5 | 5d | 2026-01-28 | 2026-02-03 |  |  |  | waiting |
| 21 | 3 | **模型工作（参数模型、电化学仿真）** | 59d | 2025-12-09 | 2026-02-27 |  |  |  |  |
| 22 | 3.1 | **仿真模型对标优化** | 24d | 2025-12-09 | 2026-01-09 |  |  | 夏习文; 刘荣康 |  |
| 23 | 3.1.1 | 电性能对标数据收集（EL1~EL15） | 14d | 2025-12-09 | 2025-12-26 |  |  |  |  |
| 24 | 3.1.2 | 电迁移、扩散电流拆分 | 14d | 2025-12-12 | 2025-12-31 |  |  |  |  |
| 25 | 3.1.3 | 基于本征参数的模型调优 | 17d | 2025-12-18 | 2026-01-09 |  |  |  | waiting |

Notes:
- 4: EL1~EL15，涵盖MID设计体系（部分能够得到实际充电能力）
- 23: MID提供ALP数据，XM完成相关能力建设及对标

| ID | WBS | Task | Duration | Start | Finish | Predecessors | inPeople | Status |
| --- | --- | --- | --- | --- | --- | --- | --- | --- |
| 26 | 3.2 | **参数模型建设（基于 5 元配方）** | 29d | 2026-01-05 | 2026-02-12 |  | 孙宗杰 | waiting |
| 27 | 3.2.1 | 电导率模型 | 16d | 2026-01-05 | 2026-01-26 |  |  | waiting |
| 28 | 3.2.2 | 扩散系数模型 | 11d | 2026-01-26 | 2026-02-09 |  |  | waiting |
| 29 | 3.2.3 | 迁移数模型（视情况） | 11d | 2026-01-29 | 2026-02-12 |  |  | waiting |
| 30 | 3.3 | 基于参数模型的性能预测 | 11d | 2026-02-13 | 2026-02-27 | 26, 22 | 刘荣康; 孙宗杰 | waiting |
